# EAP

How a schedule from MS Project changed from version to version. A marks actual dates.

## Version 1 (saved 2017-03-27)

Note of the change: Inserido EAP e Cronograma preliminar

| ID | WBS | Task | Duration | Start | Finish | Predecessors | Total float |
| --- | --- | --- | --- | --- | --- | --- | --- |
| 1 | 1 | **Projeto TalkUniversity** | 57.75d? | 2017-03-07 | 2017-05-25 |  |  |
| 2 | 1.1 | **Prospecção** | 4d? | 2017-03-07 | 2017-03-10 |  | 0d |
| 3 | 1.1.1 | **EAP** | 1.25d? | 2017-03-07 | 2017-03-08 |  | 0d |
| 4 |  | Definir Estrutura Projeto | 0.5d? | 2017-03-07 | 2017-03-07 |  | 0d |
| 5 |  | Redigir EAP | 0.75d? | 2017-03-07 | 2017-03-08 | 4 | 0d |
| 6 | 1.1.2 | **Proposta Técnica** | 2.75d? | 2017-03-08 | 2017-03-10 | 5 | 0d |
| 7 |  | Reunião para Definição | 1d? | 2017-03-08 | 2017-03-09 |  | 0d |
| 8 |  | Redigir Proposta Técnica | 0.75d? | 2017-03-09 | 2017-03-09 | 7 | 0d |
| 9 |  | Revisar Proposta Técnica | 1d? | 2017-03-10 | 2017-03-10 | 8 | 0d |
| 10 | 1.2 | **Análise** | 11.5d? | 2017-03-13 | 2017-03-28 | 9 | 0d |
| 11 | 1.2.1 | **Documento de Requisitos** | 6d? | 2017-03-13 | 2017-03-20 |  | 0d |
| 12 |  | Reunião Definitiva para definição | 1d? | 2017-03-13 | 2017-03-13 |  | 0d |
| 13 |  | Redigir Documento de Requisitos | 3.75d? | 2017-03-14 | 2017-03-17 | 12 | 0d |
| 14 |  | Revisar Documento de Requisitos | 1.25d? | 2017-03-17 | 2017-03-20 | 13 | 0d |
| 15 | 1.2.2 | **Estimativa de Tamanho Preliminar** | 3d? | 2017-03-21 | 2017-03-23 | 14 | 0d |
| 16 |  | Analisar DRE | 1d? | 2017-03-21 | 2017-03-21 |  | 0d |
| 17 |  | Redigir Estimativa | 1d? | 2017-03-22 | 2017-03-22 | 16 | 0d |
| 18 |  | Revisar Estimativa | 1d? | 2017-03-23 | 2017-03-23 | 17 | 0d |
| 19 | 1.2.3 | **Cronograma Preliminar** | 2.5d? | 2017-03-24 | 2017-03-28 | 18 | 0d |
| 20 |  | Analisar Estimativa | 1d? | 2017-03-24 | 2017-03-24 |  | 0d |
| 21 |  | Definir Responsáveis pelas Tarefas | 1d? | 2017-03-24 | 2017-03-24 |  | 0d |
| 22 |  | Gerar Cronograma | 1.5d? | 2017-03-27 | 2017-03-28 | 21, 20 | 0d |
| 23 | 1.3 | **Projeto** | 4.75d? | 2017-03-28 | 2017-04-04 | 22 | 0d |
| 24 | 1.3.1 | **Estimativa Tamanho Definitivo** | 4.75d? | 2017-03-28 | 2017-04-04 |  | 37.5d |
| 25 |  | Reunião de Definição | 1d? | 2017-03-28 | 2017-03-29 |  | 37.5d |
| 26 |  | Redigir Estimativa Definitiva | 2.75d? | 2017-03-29 | 2017-04-03 | 25 | 37.5d |
| 27 |  | Revisar Estimativa Definitiva | 1d? | 2017-04-03 | 2017-04-04 | 26 | 37.5d |
| 28 | 1.3.2 | **Cronograma Definitivo** | 2.88d? | 2017-03-28 | 2017-03-31 |  | 0d |
| 29 |  | Alterar Cronograma Preliminar | 1.88d? | 2017-03-28 | 2017-03-30 |  | 0d |
| 30 |  | Revisar Cronograma Definitivo | 1d? | 2017-03-30 | 2017-03-31 | 29 | 0d |
| 31 | 1.4 | **Desenvolvimento** | 34.38d? | 2017-03-31 | 2017-05-18 | 30 | 0d |
| 32 | 1.4.1 | **Código-Fonte** | 34.38d? | 2017-03-31 | 2017-05-18 |  | 0d |
| 33 |  | Implementar RFs | 15d? | 2017-03-31 | 2017-04-21 |  | 0d |
| 34 |  | Implementar Regras de Negócio | 10d? | 2017-04-21 | 2017-05-05 | 33 | 0d |
| 35 |  | Implementar parte gráfica | 6.88d? | 2017-05-05 | 2017-05-16 | 34 | 0d |
| 36 |  | Revisar Código | 2.5d? | 2017-05-16 | 2017-05-18 | 35 | 5d |
| 37 |  | Testes | 2.5d? | 2017-05-16 | 2017-05-18 | 35 | 0d |
| 38 | 1.5 | **Fechamento** | 5d? | 2017-05-18 | 2017-05-25 | 37 | 0d |
| 39 | 1.5.1 | **Documentação** | 3d? | 2017-05-18 | 2017-05-23 |  | 0d |
| 40 |  | Revisar Funcionalidades | 1.25d? | 2017-05-18 | 2017-05-19 |  | 0d |
| 41 |  | Redigir Documentação do código | 1.75d? | 2017-05-22 | 2017-05-23 | 40 | 0d |
| 42 | 1.5.2 | **Relatório lições aprendidas** | 2d? | 2017-05-23 | 2017-05-25 | 41 | 0d |
| 43 |  | Redigir relatório | 1d? | 2017-05-23 | 2017-05-24 |  | 0d |
| 44 |  | Revisar relatório | 1d? | 2017-05-24 | 2017-05-25 | 43 | 0d |

## Version 2 (saved 2017-05-16)

Note of the change: MRB

Last finish 2017-05-25 → 2017-07-07 (+43d).

Changed:

| ID | Task | Start | Finish | Duration | Total float | Other |
| --- | --- | --- | --- | --- | --- | --- |
| 1 | **Projeto TalkUniversity** | 2017-03-07 → 2017-03-23 (+16d) | 2017-05-25 → 2017-07-07 (+43d) | 57.75d? → 76.62d? | none → 0d |  |
| 2 | **Prospecção** | 2017-03-07 → 2017-03-23 (+16d) | 2017-03-10 → 2017-03-30 (+20d) | 4d? → 5.25d? |  |  |
| 3 | **EAP** | 2017-03-07 → 2017-03-23 (+16d) | 2017-03-08 → 2017-03-24 (+16d) |  |  |  |
| 4 | Definir Estrutura Projeto | 2017-03-07 → 2017-03-23 (+16d) | 2017-03-07 → 2017-03-23 (+16d) |  |  |  |
| 5 | Redigir EAP | 2017-03-07 → 2017-03-23 (+16d) | 2017-03-08 → 2017-03-24 (+16d) |  |  |  |
| 6 | **Proposta Técnica** | 2017-03-08 → 2017-03-24 (+16d) | 2017-03-10 → 2017-03-30 (+20d) | 2.75d? → 4d? |  |  |
| 7 | Reunião para Definição | 2017-03-08 → 2017-03-24 (+16d) | 2017-03-09 → 2017-03-27 (+18d) |  |  |  |
| 8 | Redigir Proposta Técnica | 2017-03-09 → 2017-03-27 (+18d) | 2017-03-09 → 2017-03-28 (+19d) | 0.75d? → 1.5d? |  |  |
| 9 | Revisar Proposta Técnica | 2017-03-10 → 2017-03-28 (+18d) | 2017-03-10 → 2017-03-30 (+20d) | 1d? → 1.5d? |  |  |
| 10 | **Análise** | 2017-03-13 → 2017-03-30 (+17d) | 2017-03-28 → 2017-04-24 (+27d) | 11.5d? → 17.25d? |  |  |
| 11 | **Documento de Requisitos** | 2017-03-13 → 2017-03-30 (+17d) | 2017-03-20 → 2017-04-11 (+22d) | 6d? → 8.5d? |  |  |
| 12 | Reunião Definitiva para definição | 2017-03-13 → 2017-03-30 (+17d) | 2017-03-13 → 2017-03-31 (+18d) |  |  |  |
| 13 | Redigir Documento de Requisitos | 2017-03-14 → 2017-03-31 (+17d) | 2017-03-17 → 2017-04-10 (+24d) | 3.75d? → 6d? |  |  |
| 14 | Revisar Documento de Requisitos | 2017-03-17 → 2017-04-10 (+24d) | 2017-03-20 → 2017-04-11 (+22d) | 1.25d? → 1.5d? |  |  |
| 15 | **Estimativa de Tamanho Preliminar** | 2017-03-21 → 2017-04-11 (+21d) | 2017-03-23 → 2017-04-18 (+26d) | 3d? → 5d? |  |  |
| 16 | Analisar DRE | 2017-03-21 → 2017-04-11 (+21d) | 2017-03-21 → 2017-04-14 (+24d) | 1d? → 3d? |  |  |
| 17 | Redigir Estimativa | 2017-03-22 → 2017-04-14 (+23d) | 2017-03-22 → 2017-04-17 (+26d) |  |  |  |
| 18 | Revisar Estimativa | 2017-03-23 → 2017-04-17 (+25d) | 2017-03-23 → 2017-04-18 (+26d) |  |  |  |
| 19 | **Cronograma Preliminar** | 2017-03-24 → 2017-04-18 (+25d) | 2017-03-28 → 2017-04-24 (+27d) | 2.5d? → 3.75d? |  |  |
| 20 | Analisar Estimativa | 2017-03-24 → 2017-04-18 (+25d) | 2017-03-24 → 2017-04-20 (+27d) |  |  |  |
| 21 | Definir Responsáveis pelas Tarefas | 2017-03-24 → 2017-04-18 (+25d) | 2017-03-24 → 2017-04-20 (+27d) | 1d? → 1.5d? | 0d → 0.75d |  |
| 22 | Gerar Cronograma | 2017-03-27 → 2017-04-21 (+25d) | 2017-03-28 → 2017-04-24 (+27d) |  |  |  |
| 23 | **Planejamento** | 2017-03-28 → 2017-04-24 (+27d) | 2017-04-04 → 2017-05-22 (+48d) | 4.75d? → 20.5d? |  | was named Projeto |
| 24 | **Estimativa Tamanho Definitivo** | 2017-03-28 → 2017-04-24 (+27d) | 2017-04-04 → 2017-05-22 (+48d) | 4.75d? → 20.5d? | 37.5d → 33.62d |  |
| 25 | Reunião de Definição | 2017-03-28 → 2017-04-24 (+27d) | 2017-03-29 → 2017-04-27 (+29d) | 1d? → 2d? | 37.5d → 33.62d |  |
| 26 | Redigir Estimativa Definitiva | 2017-03-29 → 2017-04-27 (+29d) | 2017-04-03 → 2017-05-19 (+46d) | 2.75d? → 2.25d? | 37.5d → 33.62d |  |
| 27 | Revisar Estimativa Definitiva | 2017-04-03 → 2017-05-22 (+49d) | 2017-04-04 → 2017-05-22 (+48d) |  | 37.5d → 33.62d |  |
| 28 | **Cronograma Definitivo** | 2017-03-28 → 2017-04-24 (+27d) | 2017-03-31 → 2017-04-26 (+26d) | 2.88d? → 2d? |  |  |
| 29 | Alterar Cronograma Preliminar | 2017-03-28 → 2017-04-24 (+27d) | 2017-03-30 → 2017-04-25 (+26d) | 1.88d? → 1d? |  |  |
| 30 | Revisar Cronograma Definitivo | 2017-03-30 → 2017-04-25 (+26d) | 2017-03-31 → 2017-04-26 (+26d) |  |  |  |
| 31 | **Desenvolvimento** | 2017-03-31 → 2017-04-26 (+26d) | 2017-05-18 → 2017-06-29 (+42d) | 34.38d? → 45.75d? |  |  |
| 32 | **Código-Fonte** | 2017-03-31 → 2017-04-26 (+26d) | 2017-05-18 → 2017-06-29 (+42d) | 34.38d? → 45.75d? |  |  |
| 33 | Implementar RFs | 2017-03-31 → 2017-04-26 (+26d) | 2017-04-21 → 2017-05-25 (+34d) | 15d? → 21d? |  |  |
| 34 | Implementar Regras de Negócio | 2017-04-21 → 2017-05-25 (+34d) | 2017-05-05 → 2017-06-12 (+38d) | 10d? → 12.25d? |  |  |
| 35 | Implementar parte gráfica | 2017-05-05 → 2017-06-12 (+38d) | 2017-05-16 → 2017-06-21 (+36d) |  |  |  |
| 36 | Revisar Código | 2017-05-16 → 2017-06-21 (+36d) | 2017-05-18 → 2017-06-26 (+39d) |  | 5d → 9.5d |  |
| 37 | Testes | 2017-05-16 → 2017-06-21 (+36d) | 2017-05-18 → 2017-06-29 (+42d) | 2.5d? → 5.62d? |  |  |
| 38 | **Fechamento** | 2017-05-18 → 2017-06-29 (+42d) | 2017-05-25 → 2017-07-07 (+43d) | 5d? → 6.38d? |  |  |
| 39 | **Documentação** | 2017-05-18 → 2017-06-29 (+42d) | 2017-05-23 → 2017-07-05 (+43d) | 3d? → 4.38d? |  |  |
| 40 | Revisar Funcionalidades | 2017-05-18 → 2017-06-29 (+42d) | 2017-05-19 → 2017-06-30 (+42d) |  |  |  |
| 41 | Redigir Documentação do código | 2017-05-22 → 2017-06-30 (+39d) | 2017-05-23 → 2017-07-05 (+43d) | 1.75d? → 3.12d? |  |  |
| 42 | **Relatório lições aprendidas** | 2017-05-23 → 2017-07-05 (+43d) | 2017-05-25 → 2017-07-07 (+43d) |  |  |  |
| 43 | Redigir relatório | 2017-05-23 → 2017-07-05 (+43d) | 2017-05-24 → 2017-07-06 (+43d) |  |  |  |
| 44 | Revisar relatório | 2017-05-24 → 2017-07-06 (+43d) | 2017-05-25 → 2017-07-07 (+43d) |  |  |  |

## Version 3 (saved 2017-05-29)

Note of the change: Cronograma Atualizado

Last finish stays 2017-07-07.

Added:

| ID | Task | Duration | Start | Finish | Predecessors | Resources |
| --- | --- | --- | --- | --- | --- | --- |
| 23 | **Projeto** | 3.5d? | 2017-05-09 14:40 | 2017-05-15 09:40 | 22 |  |
| 24 | **MRB** | 3.5d? | 2017-05-09 14:40 | 2017-05-15 09:40 |  |  |
| 25 | Revisar Requisitos | 0.5d? | 2017-05-09 14:40 | 2017-05-10 09:40 |  | Natan |
| 26 | Redigir MRB | 2d? | 2017-05-10 09:40 | 2017-05-12 09:40 | 25 | Natan |
| 27 | Revisar MRB | 1d? | 2017-05-12 09:40 | 2017-05-15 09:40 | 26 | Natan |
| 28 | **Release 1** | 11.21d? | 2017-05-15 09:40 | 2017-05-30 11:20 | 27 |  |
| 38 | Configurar Conexão com Firebase | 2.75d? | 2017-05-16 16:20 | 2017-05-19 14:20 |  | Tiago |
| 39 | RF04 - Criar Usuário | 1.5d? | 2017-05-19 14:20 | 2017-05-23 09:20 | 38 | Tiago |
| 40 | RF05 - Deletar Usuário | 1.5d? | 2017-05-23 09:20 | 2017-05-24 14:20 | 39 | Tiago |
| 41 | RF06 - Editar Usuário | 1.5d? | 2017-05-24 14:20 | 2017-05-26 09:20 | 40 | Tiago |
| 42 | RF01 - Criar Grupo | 1.5d? | 2017-05-26 09:20 | 2017-05-29 14:20 | 41 | Tiago |
| 43 | **Testes** | 0.75d? | 2017-05-29 14:20 | 2017-05-30 11:20 | 42 |  |
| 44 | Testar Conexão Firebase | 0.5d? | 2017-05-29 14:20 | 2017-05-30 09:20 |  | Tiago |
| 45 | Testar RFs | 0.25d? | 2017-05-30 09:20 | 2017-05-30 11:20 | 44 | Tiago; Natan |
| 46 | **Release 2** | 12.08d? | 2017-05-30 11:20 | 2017-06-15 12:00 | 45 |  |
| 47 | **Planejamento** | 1.71d? | 2017-05-30 11:20 | 2017-05-31 18:00 |  |  |
| 48 | **Estimativa Tamanho Definitivo** | 0.83d? | 2017-05-30 11:20 | 2017-05-31 10:00 |  |  |
| 49 | Reunião de Definição | 0.08d? | 2017-05-30 11:20 | 2017-05-30 12:00 |  | Natan; Homero; Tiago |
| 50 | Redigir Estimativa Definitiva | 0.5d? | 2017-05-30 13:00 | 2017-05-30 17:00 | 49 | Homero |
| 51 | Revisar Estimativa Definitiva | 0.25d? | 2017-05-30 17:00 | 2017-05-31 10:00 | 50 | Homero |
| 52 | **Cronograma Definitivo** | 0.88d? | 2017-05-31 10:00 | 2017-05-31 18:00 | 51 |  |
| 53 | Alterar Cronograma Preliminar | 0.5d? | 2017-05-31 10:00 | 2017-05-31 15:00 |  | Natan |
| 54 | Revisar Cronograma Definitivo | 0.38d? | 2017-05-31 15:00 | 2017-05-31 18:00 | 53 | Natan |
| 55 | **Desenvolvimento** | 9.38d? | 2017-06-01 09:00 | 2017-06-14 12:00 | 54 |  |
| 56 | RF02 - Remover grupo | 0.75d? | 2017-06-01 09:00 | 2017-06-01 16:00 |  | Natan; Tiago |
| 57 | RF03 - Editar grupo | 0.75d? | 2017-06-01 16:00 | 2017-06-02 14:00 | 56 | Natan; Tiago |
| 58 | RF12 - Visualizar Grupo | 0.88d? | 2017-06-02 14:00 | 2017-06-05 12:00 | 57 | Natan; Tiago |
| 59 | RF14 - Editar Administrador do Grupo | 0.88d? | 2017-06-05 13:00 | 2017-06-06 11:00 | 58 | Natan; Tiago |
| 60 | RF16 - Adicionar Instituição | 0.88d? | 2017-06-06 11:00 | 2017-06-07 10:00 | 59 | Natan; Tiago |
| 61 | RF17 - Editar Instituição | 0.88d? | 2017-06-07 10:00 | 2017-06-07 18:00 | 60 | Natan; Tiago |
| 62 | RF18 - Buscar Instituição | 0.88d? | 2017-06-08 09:00 | 2017-06-08 17:00 | 61 | Natan; Tiago |
| 63 | RF23 - Criar Aulas | 0.88d? | 2017-06-08 17:00 | 2017-06-09 16:00 | 62 | Natan; Tiago |
| 64 | RF24 - Visualizar Aulas | 0.88d? | 2017-06-09 16:00 | 2017-06-12 15:00 | 63 | Natan; Tiago |
| 65 | RF25 - Remover Aulas | 0.88d? | 2017-06-12 15:00 | 2017-06-13 14:00 | 64 | Natan; Tiago |
| 66 | RF26 - Editar Aulas | 0.88d? | 2017-06-13 14:00 | 2017-06-14 12:00 | 65 | Natan; Tiago |
| 67 | **Testes** | 1d? | 2017-06-14 13:00 | 2017-06-15 12:00 | 66 |  |
| 68 | Testar RFs | 1d? | 2017-06-14 13:00 | 2017-06-15 12:00 |  | Homero |
| 69 | **Release 3** | 12.21d? | 2017-06-15 13:00 | 2017-07-03 14:40 | 68 |  |
| 70 | **Planejamento** | 1.71d? | 2017-06-15 13:00 | 2017-06-19 09:40 |  |  |
| 71 | **Estimativa Tamanho Definitivo** | 0.83d? | 2017-06-15 13:00 | 2017-06-16 10:40 |  |  |
| 72 | Reunião de Definição | 0.08d? | 2017-06-15 13:00 | 2017-06-15 13:40 |  | Homero; Natan; Tiago |
| 73 | Redigir Estimativa Definitiva | 0.5d? | 2017-06-15 13:40 | 2017-06-15 17:40 | 72 | Homero |
| 74 | Revisar Estimativa Definitiva | 0.25d? | 2017-06-15 17:40 | 2017-06-16 10:40 | 73 | Homero |
| 75 | **Cronograma Definitivo** | 0.88d? | 2017-06-16 10:40 | 2017-06-19 09:40 | 74 |  |
| 76 | Alterar Cronograma Preliminar | 0.5d? | 2017-06-16 10:40 | 2017-06-16 15:40 |  | Homero |
| 77 | Revisar Cronograma Definitivo | 0.38d? | 2017-06-16 15:40 | 2017-06-19 09:40 | 76 | Homero |
| 78 | **Desenvolvimento** | 9.5d? | 2017-06-19 09:40 | 2017-06-30 14:40 | 77 |  |
| 79 | RF07 - Criar Conversa | 2d? | 2017-06-19 09:40 | 2017-06-21 09:40 |  | Natan; Tiago |
| 80 | RF13 - Visualizar Conversa | 0.75d? | 2017-06-21 09:40 | 2017-06-21 16:40 | 79 | Natan; Tiago |
| 81 | RF08 - Criar Convite | 0.75d? | 2017-06-21 16:40 | 2017-06-22 14:40 | 80 | Natan; Tiago |
| 82 | RF09 - Rejeitar Convite | 0.75d? | 2017-06-22 14:40 | 2017-06-23 11:40 | 81 | Natan; Tiago |
| 83 | RF10 - Aceitar Convite | 0.75d? | 2017-06-23 11:40 | 2017-06-26 09:40 | 82 | Natan; Tiago |
| 84 | RF11 - Revogar Convite | 0.75d? | 2017-06-26 09:40 | 2017-06-26 16:40 | 83 | Natan; Tiago |
| 85 | RF15 - Compartilhar Mídia | 0.75d? | 2017-06-26 16:40 | 2017-06-27 14:40 | 84 | Natan; Tiago |
| 86 | RF19 - Criar Enquete | 0.75d? | 2017-06-27 14:40 | 2017-06-28 11:40 | 85 | Natan; Tiago |
| 87 | RF20 - Visualizar Enquete | 0.75d? | 2017-06-28 11:40 | 2017-06-29 09:40 | 86 | Natan; Tiago |
| 88 | RF21 - Remover Enquete | 0.75d? | 2017-06-29 09:40 | 2017-06-29 16:40 | 87 | Natan; Tiago |
| 89 | RF22 - Editar Enquete | 0.75d? | 2017-06-29 16:40 | 2017-06-30 14:40 | 88 | Natan; Tiago |
| 90 | **Testes** | 1d? | 2017-06-30 14:40 | 2017-07-03 14:40 | 89 |  |
| 91 | Testar RFs | 1d? | 2017-06-30 14:40 | 2017-07-03 14:40 |  | Homero |
| 93 | Publicar Aplicativo | 1d? | 2017-07-03 14:40 | 2017-07-04 14:40 |  | Natan; Tiago |
| 94 | Relatório Lições Aprendidas | 3d? | 2017-07-03 14:40 | 2017-07-06 14:40 |  | Homero |
| 95 | Atualizar Experiências Prévias | 1d? | 2017-07-06 14:40 | 2017-07-07 14:40 | 94 | Homero |

Removed: 32 Código-Fonte; 33 Implementar RFs; 34 Implementar Regras de Negócio; 35 Implementar parte gráfica; 36 Revisar Código; 37 Testes; 39 Documentação; 40 Revisar Funcionalidades; 41 Redigir Documentação do código; 42 Relatório lições aprendidas; 43 Redigir relatório; 44 Revisar relatório

Changed:

| ID | Task | Start | Finish | Duration | Total float | Predecessors | Other |
| --- | --- | --- | --- | --- | --- | --- | --- |
| 1 | **Projeto TalkUniversity** | 2017-03-23 → 2017-04-14 09:00 (+22d) | 2017-07-07 → 2017-07-07 14:40 | 76.62d? → 60.58d? | 0d → none |  |  |
| 2 | **Prospecção** | 2017-03-23 → 2017-04-14 09:00 (+22d) | 2017-03-30 → 2017-04-19 15:20 (+20d) | 5.25d? → 3.67d? |  |  |  |
| 3 | **EAP** | 2017-03-23 → 2017-04-14 09:00 (+22d) | 2017-03-24 → 2017-04-17 14:00 (+24d) | 1.25d? → 1.5d? |  |  |  |
| 4 | Definir Estrutura Projeto | 2017-03-23 → 2017-04-14 09:00 (+22d) | 2017-03-23 → 2017-04-14 14:00 (+22d) |  |  |  |  |
| 5 | Redigir EAP | 2017-03-23 → 2017-04-14 14:00 (+22d) | 2017-03-24 → 2017-04-17 14:00 (+24d) | 0.75d? → 1d? |  |  |  |
| 6 | **Proposta Técnica** | 2017-03-24 → 2017-04-17 14:00 (+24d) | 2017-03-30 → 2017-04-19 15:20 (+20d) | 4d? → 2.17d? |  |  |  |
| 7 | Reunião para Definição | 2017-03-24 → 2017-04-17 14:00 (+24d) | 2017-03-27 → 2017-04-17 15:20 (+21d) | 1d? → 0.17d? |  |  | resources Natan [16.7%]; Tiago [33.3%]; Homero [33.3%] → Natan; Homero; Tiago |
| 8 | Redigir Proposta Técnica | 2017-03-27 → 2017-04-17 15:20 (+21d) | 2017-03-28 → 2017-04-18 15:20 (+21d) | 1.5d? → 1d? |  |  | resources Natan → Homero |
| 9 | Revisar Proposta Técnica | 2017-03-28 → 2017-04-18 15:20 (+21d) | 2017-03-30 → 2017-04-19 15:20 (+20d) | 1.5d? → 1d? |  |  | resources Tiago [25%]; Homero [25%] → Homero |
| 10 | **Análise** | 2017-03-30 → 2017-04-19 15:20 (+20d) | 2017-04-24 → 2017-05-09 14:40 (+15d) | 17.25d? → 13.92d? |  |  |  |
| 11 | **Documento de Requisitos** | 2017-03-30 → 2017-04-19 15:20 (+20d) | 2017-04-11 → 2017-04-25 16:40 (+14d) | 8.5d? → 4.17d? |  |  |  |
| 12 | Reunião Definitiva para definição | 2017-03-30 → 2017-04-19 15:20 (+20d) | 2017-03-31 → 2017-04-19 16:40 (+19d) | 1d? → 0.17d? |  |  | resources Natan [33.3%]; Tiago [33.3%]; Homero [33.3%] → Natan; Homero; Tiago |
| 13 | Redigir Documento de Requisitos | 2017-03-31 → 2017-04-19 16:40 (+19d) | 2017-04-10 → 2017-04-24 16:40 (+14d) | 6d? → 3d? |  |  |  |
| 14 | Revisar Documento de Requisitos | 2017-04-10 → 2017-04-24 16:40 (+14d) | 2017-04-11 → 2017-04-25 16:40 (+14d) | 1.5d? → 1d? |  |  | resources Homero → Natan |
| 15 | **Estimativa de Tamanho Preliminar** | 2017-04-11 → 2017-04-25 16:40 (+14d) | 2017-04-18 → 2017-05-01 16:40 (+13d) | 5d? → 4d? |  |  |  |
| 16 | Analisar DRE | 2017-04-11 → 2017-04-25 16:40 (+14d) | 2017-04-14 → 2017-04-26 16:40 (+12d) | 3d? → 1d? |  |  | resources Homero [25%] → Homero |
| 17 | Redigir Estimativa | 2017-04-14 → 2017-04-26 16:40 (+12d) | 2017-04-17 → 2017-04-28 16:40 (+11d) | 1d? → 2d? |  |  |  |
| 18 | Revisar Estimativa | 2017-04-17 → 2017-04-28 16:40 (+11d) | 2017-04-18 → 2017-05-01 16:40 (+13d) |  |  |  | resources Natan [50%] → Natan |
| 19 | **Cronograma Preliminar** | 2017-04-18 → 2017-05-01 16:40 (+13d) | 2017-04-24 → 2017-05-09 14:40 (+15d) | 3.75d? → 5.75d? |  |  |  |
| 20 | Analisar Estimativa | 2017-04-18 → 2017-05-01 16:40 (+13d) | 2017-04-20 → 2017-05-02 16:40 (+12d) |  |  |  | resources Natan [50%] → Natan |
| 21 | Definir Responsáveis pelas Tarefas | 2017-04-18 → 2017-05-02 16:40 (+14d) | 2017-04-20 → 2017-05-04 16:40 (+14d) | 1.5d? → 2d? | 0.75d → 0d | none → 20 |  |
| 22 | Gerar Cronograma | 2017-04-21 → 2017-05-04 16:40 (+13d) | 2017-04-24 → 2017-05-09 14:40 (+15d) | 1.5d? → 2.75d? |  | 21, 20 → 21 |  |
| 29 | **Planejamento** | 2017-04-24 → 2017-05-15 09:40 (+21d) | 2017-05-22 → 2017-05-16 16:20 (-6d) | 20.5d? → 1.71d? |  | 22 → none |  |
| 30 | **Estimativa Tamanho Definitivo** | 2017-04-24 → 2017-05-15 09:40 (+21d) | 2017-05-22 → 2017-05-15 17:20 (-7d) | 20.5d? → 0.83d? | 33.62d → 0d |  |  |
| 31 | Reunião de Definição | 2017-04-24 → 2017-05-15 09:40 (+21d) | 2017-04-27 → 2017-05-15 10:20 (+18d) | 2d? → 0.08d? | 33.62d → 0d |  | resources Natan [33.3%]; Tiago [33.3%]; Homero [33.3%] → Natan; Homero; Tiago |
| 32 | Redigir Estimativa Definitiva | 2017-04-27 → 2017-05-15 10:20 (+18d) | 2017-05-19 → 2017-05-15 15:20 (-4d) | 2.25d? → 0.5d? | 33.62d → 0d |  |  |
| 33 | Revisar Estimativa Definitiva | 2017-05-22 → 2017-05-15 15:20 (-7d) | 2017-05-22 → 2017-05-15 17:20 (-7d) | 1d? → 0.25d? | 33.62d → 0d |  | resources Natan [50%] → Homero |
| 34 | **Cronograma Definitivo** | 2017-04-24 → 2017-05-15 17:20 (+21d) | 2017-04-26 → 2017-05-16 16:20 (+20d) | 2d? → 0.88d? |  | none → 33 |  |
| 35 | Alterar Cronograma Preliminar | 2017-04-24 → 2017-05-15 17:20 (+21d) | 2017-04-25 → 2017-05-16 13:20 (+21d) | 1d? → 0.5d? |  |  |  |
| 36 | Revisar Cronograma Definitivo | 2017-04-25 → 2017-05-16 13:20 (+21d) | 2017-04-26 → 2017-05-16 16:20 (+20d) | 1d? → 0.38d? |  |  | resources Tiago → Natan |
| 37 | **Desenvolvimento** | 2017-04-26 → 2017-05-16 16:20 (+20d) | 2017-06-29 → 2017-05-29 14:20 (-31d) | 45.75d? → 8.75d? |  |  |  |
| 92 | **Fechamento** | 2017-06-29 → 2017-07-03 14:40 (+4d) | 2017-07-07 → 2017-07-07 14:40 | 6.38d? → 4d? |  | Testes → 91 |  |

## Version 4 (saved 2017-05-29)

Note of the change: Atualizado Artefatos

Last finish 2017-07-07 → 2017-06-15 (-22d). Complete tasks 0 → 22.

Added:

| ID | Task | Duration | Start | Finish | Predecessors | Resources |
| --- | --- | --- | --- | --- | --- | --- |
| 37 | **Plano de projeto** | 0.25d? | 2017-05-15 11:40 | 2017-05-15 14:40 | 36 |  |
| 38 | Redigir Plano de Projeto | 0.12d? | 2017-05-15 11:40 | 2017-05-15 13:40 |  | Homero |
| 39 | Revisar Plano de Projeto | 0.12d? | 2017-05-15 13:40 | 2017-05-15 14:40 | 38 | Natan |
| 61 | **Plano de projeto** | 0.25d? | 2017-05-30 11:00 | 2017-05-30 14:00 | 60 |  |
| 62 | Redigir Plano de Projeto | 0.12d? | 2017-05-30 11:00 | 2017-05-30 12:00 |  | Homero |
| 63 | Revisar Plano de Projeto | 0.12d? | 2017-05-30 13:00 | 2017-05-30 14:00 | 62 | Natan |
| 84 | **Plano de projeto** | 2d? | 2017-06-06 10:20 | 2017-06-08 10:20 | 83 |  |
| 85 | Redigir plano de projeto | 1d? | 2017-06-06 10:20 | 2017-06-07 10:20 |  |  |
| 86 | Revisar Plano de projeto | 1d? | 2017-06-07 10:20 | 2017-06-08 10:20 | 85 |  |

Changed:

| ID | Task | Start | Finish | Duration | Complete | Total float | Predecessors | Other |
| --- | --- | --- | --- | --- | --- | --- | --- | --- |
| 1 | **Projeto TalkUniversity** | 2017-04-14 09:00 → 2017-04-28 09:00 A (+14d) | 2017-07-07 14:40 → 2017-06-15 14:20 (-22d) | 60.58d? → 34.54d? | 0% → 45% |  |  | baseline start none → 2017-04-28 09:00; baseline finish none → 2017-06-15 14:20 |
| 2 | **Prospecção** | 2017-04-14 09:00 → 2017-04-28 09:00 A (+14d) | 2017-04-19 15:20 → 2017-05-01 16:40 A (+12d) | 3.67d? → 1.83d? | 0% → 100% | 0d → none |  | baseline start none → 2017-04-28 09:00; baseline finish none → 2017-05-01 16:40 |
| 3 | **EAP** | 2017-04-14 09:00 → 2017-04-28 09:00 A (+14d) | 2017-04-17 14:00 → 2017-04-28 17:00 A (+11d) | 1.5d? → 0.88d? | 0% → 100% | 0d → none |  | baseline start none → 2017-04-28 09:00; baseline finish none → 2017-04-28 17:00 |
| 4 | Definir Estrutura Projeto | 2017-04-14 09:00 → 2017-04-28 09:00 A (+14d) | 2017-04-14 14:00 → 2017-04-28 11:00 A (+14d) | 0.5d? → 0.25d? | 0% → 100% | 0d → none |  | baseline start none → 2017-04-28 09:00; baseline finish none → 2017-04-28 11:00 |
| 5 | Redigir EAP | 2017-04-14 14:00 → 2017-04-28 11:00 A (+14d) | 2017-04-17 14:00 → 2017-04-28 17:00 A (+11d) | 1d? → 0.62d? | 0% → 100% | 0d → none |  | baseline start none → 2017-04-28 11:00; baseline finish none → 2017-04-28 17:00 |
| 6 | **Proposta Técnica** | 2017-04-17 14:00 → 2017-04-28 17:00 A (+11d) | 2017-04-19 15:20 → 2017-05-01 16:40 A (+12d) | 2.17d? → 0.96d? | 0% → 100% | 0d → none |  | baseline start none → 2017-04-28 17:00; baseline finish none → 2017-05-01 16:40 |
| 7 | Reunião para Definição | 2017-04-17 14:00 → 2017-04-28 17:00 A (+11d) | 2017-04-17 15:20 → 2017-04-28 17:40 A (+11d) | 0.17d? → 0.08d? | 0% → 100% | 0d → none |  | baseline start none → 2017-04-28 17:00; baseline finish none → 2017-04-28 17:40 |
| 8 | Redigir Proposta Técnica | 2017-04-17 15:20 → 2017-04-28 17:40 A (+11d) | 2017-04-18 15:20 → 2017-05-01 14:40 A (+13d) | 1d? → 0.62d? | 0% → 100% | 0d → none |  | baseline start none → 2017-04-28 17:40; baseline finish none → 2017-05-01 14:40 |
| 9 | Revisar Proposta Técnica | 2017-04-18 15:20 → 2017-05-01 14:40 A (+13d) | 2017-04-19 15:20 → 2017-05-01 16:40 A (+12d) | 1d? → 0.25d? | 0% → 100% | 0d → none |  | baseline start none → 2017-05-01 14:40; baseline finish none → 2017-05-01 16:40 |
| 10 | **Análise** | 2017-04-19 15:20 → 2017-05-01 16:40 A (+12d) | 2017-05-09 14:40 → 2017-05-10 17:20 A (+1d) | 13.92d? → 7.08d? | 0% → 100% | 0d → none |  | baseline start none → 2017-05-01 16:40; baseline finish none → 2017-05-10 17:20 |
| 11 | **Documento de Requisitos** | 2017-04-19 15:20 → 2017-05-01 16:40 A (+12d) | 2017-04-25 16:40 → 2017-05-04 13:20 A (+9d) | 4.17d? → 2.58d? | 0% → 100% | 0d → none |  | baseline start none → 2017-05-01 16:40; baseline finish none → 2017-05-04 13:20 |
| 12 | Reunião Definitiva para definição | 2017-04-19 15:20 → 2017-05-01 16:40 A (+12d) | 2017-04-19 16:40 → 2017-05-01 17:20 A (+12d) | 0.17d? → 0.08d? | 0% → 100% | 0d → none |  | baseline start none → 2017-05-01 16:40; baseline finish none → 2017-05-01 17:20 |
| 13 | Redigir Documento de Requisitos | 2017-04-19 16:40 → 2017-05-01 17:20 A (+12d) | 2017-04-24 16:40 → 2017-05-04 10:20 A (+10d) | 3d? → 2.25d? | 0% → 100% | 0d → none |  | baseline start none → 2017-05-01 17:20; baseline finish none → 2017-05-04 10:20 |
| 14 | Revisar Documento de Requisitos | 2017-04-24 16:40 → 2017-05-04 10:20 A (+10d) | 2017-04-25 16:40 → 2017-05-04 13:20 A (+9d) | 1d? → 0.25d? | 0% → 100% | 0d → none |  | baseline start none → 2017-05-04 10:20; baseline finish none → 2017-05-04 13:20 |
| 15 | **Estimativa de Tamanho Preliminar** | 2017-04-25 16:40 → 2017-05-04 13:20 A (+9d) | 2017-05-01 16:40 → 2017-05-08 13:20 A (+7d) | 4d? → 2d? | 0% → 100% | 0d → none |  | baseline start none → 2017-05-04 13:20; baseline finish none → 2017-05-08 13:20 |
| 16 | Analisar DRE | 2017-04-25 16:40 → 2017-05-04 13:20 A (+9d) | 2017-04-26 16:40 → 2017-05-04 15:20 A (+8d) | 1d? → 0.25d? | 0% → 100% | 0d → none |  | baseline start none → 2017-05-04 13:20; baseline finish none → 2017-05-04 15:20 |
| 17 | Redigir Estimativa | 2017-04-26 16:40 → 2017-05-04 15:20 A (+8d) | 2017-04-28 16:40 → 2017-05-08 10:20 A (+10d) | 2d? → 1.5d? | 0% → 100% | 0d → none |  | baseline start none → 2017-05-04 15:20; baseline finish none → 2017-05-08 10:20 |
| 18 | Revisar Estimativa | 2017-04-28 16:40 → 2017-05-08 10:20 A (+10d) | 2017-05-01 16:40 → 2017-05-08 13:20 A (+7d) | 1d? → 0.25d? | 0% → 100% | 0d → none |  | baseline start none → 2017-05-08 10:20; baseline finish none → 2017-05-08 13:20 |
| 19 | **Cronograma Preliminar** | 2017-05-01 16:40 → 2017-05-08 13:20 A (+7d) | 2017-05-09 14:40 → 2017-05-10 17:20 A (+1d) | 5.75d? → 2.5d? | 0% → 100% | 0d → none |  | baseline start none → 2017-05-08 13:20; baseline finish none → 2017-05-10 17:20 |
| 20 | Analisar Estimativa | 2017-05-01 16:40 → 2017-05-08 13:20 A (+7d) | 2017-05-02 16:40 → 2017-05-08 15:20 A (+6d) | 1d? → 0.25d? | 0% → 100% | 0d → none |  | baseline start none → 2017-05-08 13:20; baseline finish none → 2017-05-08 15:20 |
| 21 | Definir Responsáveis pelas Tarefas | 2017-05-02 16:40 → 2017-05-08 15:20 A (+6d) | 2017-05-04 16:40 → 2017-05-09 13:20 A (+5d) | 2d? → 0.75d? | 0% → 100% | 0d → none |  | baseline start none → 2017-05-08 15:20; baseline finish none → 2017-05-09 13:20 |
| 22 | Gerar Cronograma | 2017-05-04 16:40 → 2017-05-09 13:20 A (+5d) | 2017-05-09 14:40 → 2017-05-10 17:20 A (+1d) | 2.75d? → 1.5d? | 0% → 100% | 0d → none |  | baseline start none → 2017-05-09 13:20; baseline finish none → 2017-05-10 17:20 |
| 23 | **Projeto** | 2017-05-09 14:40 → 2017-05-10 17:20 A (+1d) | 2017-05-15 09:40 → 2017-05-12 15:20 A (-3d) | 3.5d? → 1.75d? | 0% → 100% | 0d → none |  | baseline start none → 2017-05-10 17:20; baseline finish none → 2017-05-12 15:20 |
| 24 | **MRB** | 2017-05-09 14:40 → 2017-05-10 17:20 A (+1d) | 2017-05-15 09:40 → 2017-05-12 15:20 A (-3d) | 3.5d? → 1.75d? | 0% → 100% | 0d → none |  | baseline start none → 2017-05-10 17:20; baseline finish none → 2017-05-12 15:20 |
| 25 | Revisar Requisitos | 2017-05-09 14:40 → 2017-05-10 17:20 A (+1d) | 2017-05-10 09:40 → 2017-05-11 10:20 A (+1d) | 0.5d? → 0.25d? | 0% → 100% | 0d → none |  | baseline start none → 2017-05-10 17:20; baseline finish none → 2017-05-11 10:20 |
| 26 | Redigir MRB | 2017-05-10 09:40 → 2017-05-11 10:20 A (+1d) | 2017-05-12 09:40 → 2017-05-12 13:20 A | 2d? → 1.25d? | 0% → 100% | 0d → none |  | baseline start none → 2017-05-11 10:20; baseline finish none → 2017-05-12 13:20 |
| 27 | Revisar MRB | 2017-05-12 09:40 → 2017-05-12 13:20 A | 2017-05-15 09:40 → 2017-05-12 15:20 A (-3d) | 1d? → 0.25d? | 0% → 100% | 0d → none |  | baseline start none → 2017-05-12 13:20; baseline finish none → 2017-05-12 15:20 |
| 28 | **Release 1** | 2017-05-15 09:40 → 2017-05-12 15:20 A (-3d) | 2017-05-30 11:20 → 2017-05-29 14:40 (-1d) | 11.21d? → 10.92d? | 0% → 63% | 0d → 12.96d |  | baseline start none → 2017-05-12 15:20; baseline finish none → 2017-05-29 14:40 |
| 29 | **Planejamento** | 2017-05-15 09:40 → 2017-05-12 15:20 (-3d) | 2017-05-16 16:20 → 2017-05-15 14:40 (-1d) | 1.71d? → 0.92d? |  |  |  | baseline start none → 2017-05-12 15:20; baseline finish none → 2017-05-15 14:40 |
| 30 | **Estimativa Tamanho Definitivo** | 2017-05-15 09:40 → 2017-05-12 15:20 (-3d) | 2017-05-15 17:20 → 2017-05-15 09:40 | 0.83d? → 0.42d? |  |  |  | baseline start none → 2017-05-12 15:20; baseline finish none → 2017-05-15 09:40 |
| 31 | Reunião de Definição | 2017-05-15 09:40 → 2017-05-12 15:20 (-3d) | 2017-05-15 10:20 → 2017-05-12 15:40 (-3d) | 0.08d? → 0.04d? |  |  |  | baseline start none → 2017-05-12 15:20; baseline finish none → 2017-05-12 15:40 |
| 32 | Redigir Estimativa Definitiva | 2017-05-15 10:20 → 2017-05-12 15:40 (-3d) | 2017-05-15 15:20 → 2017-05-12 17:40 (-3d) | 0.5d? → 0.25d? |  |  |  | baseline start none → 2017-05-12 15:40; baseline finish none → 2017-05-12 17:40 |
| 33 | Revisar Estimativa Definitiva | 2017-05-15 15:20 → 2017-05-12 17:40 (-3d) | 2017-05-15 17:20 → 2017-05-15 09:40 | 0.25d? → 0.12d? |  |  |  | baseline start none → 2017-05-12 17:40; baseline finish none → 2017-05-15 09:40 |
| 34 | **Cronograma Definitivo** | 2017-05-15 17:20 → 2017-05-15 09:40 | 2017-05-16 16:20 → 2017-05-15 11:40 (-1d) | 0.88d? → 0.25d? |  |  |  | baseline start none → 2017-05-15 09:40; baseline finish none → 2017-05-15 11:40 |
| 35 | Alterar Cronograma Preliminar | 2017-05-15 17:20 → 2017-05-15 09:40 | 2017-05-16 13:20 → 2017-05-15 10:40 (-1d) | 0.5d? → 0.12d? |  |  |  | baseline start none → 2017-05-15 09:40; baseline finish none → 2017-05-15 10:40 |
| 36 | Revisar Cronograma Definitivo | 2017-05-16 13:20 → 2017-05-15 10:40 (-1d) | 2017-05-16 16:20 → 2017-05-15 11:40 (-1d) | 0.38d? → 0.12d? |  |  |  | baseline start none → 2017-05-15 10:40; baseline finish none → 2017-05-15 11:40 |
| 40 | **Desenvolvimento** | 2017-05-16 16:20 → 2017-05-15 14:40 A (-1d) | 2017-05-29 14:20 → 2017-05-22 17:10 (-7d) | 8.75d? → 5.31d? | 0% → 82% |  | 36 → 39 | baseline start none → 2017-05-15 14:40; baseline finish none → 2017-05-22 17:10 |
| 41 | Configurar Conexão com Firebase | 2017-05-16 16:20 → 2017-05-15 14:40 A (-1d) | 2017-05-19 14:20 → 2017-05-16 17:40 A (-3d) | 2.75d? → 1.38d? | 0% → 100% | 0d → none |  | baseline start none → 2017-05-15 14:40; baseline finish none → 2017-05-16 17:40 |
| 42 | RF04 - Criar Usuário | 2017-05-19 14:20 → 2017-05-16 17:40 A (-3d) | 2017-05-23 09:20 → 2017-05-17 16:40 A (-6d) | 1.5d? → 0.88d? | 0% → 100% | 0d → none |  | baseline start none → 2017-05-16 17:40; baseline finish none → 2017-05-17 16:40 |
| 43 | RF05 - Deletar Usuário | 2017-05-23 09:20 → 2017-05-17 16:40 A (-6d) | 2017-05-24 14:20 → 2017-05-18 13:40 A (-6d) | 1.5d? → 0.62d? | 0% → 100% | 0d → none |  | baseline start none → 2017-05-17 16:40; baseline finish none → 2017-05-18 13:40 |
| 44 | RF06 - Editar Usuário | 2017-05-24 14:20 → 2017-05-18 13:40 A (-6d) | 2017-05-26 09:20 → 2017-05-19 09:40 A (-7d) | 1.5d? → 0.62d? | 0% → 100% | 0d → none |  | baseline start none → 2017-05-18 13:40; baseline finish none → 2017-05-19 09:40 |
| 45 | RF01 - Criar Grupo | 2017-05-26 09:20 → 2017-05-19 09:40 A (-7d) | 2017-05-29 14:20 → 2017-05-19 17:40 A (-10d) | 1.5d? → 0.88d? | 0% → 100% | 0d → none |  | baseline start none → 2017-05-19 09:40; baseline finish none → 2017-05-19 17:40 |
| 46 | RF02 - Remover grupo | 2017-06-01 09:00 → 2017-05-19 17:40 (-13d) | 2017-06-01 16:00 → 2017-05-22 11:10 (-10d) | 0.75d? → 0.31d? |  |  | none → 45 | baseline start none → 2017-05-19 17:40; baseline finish none → 2017-05-22 11:10 |
| 47 | RF03 - Editar grupo | 2017-06-01 16:00 → 2017-05-22 11:10 (-10d) | 2017-06-02 14:00 → 2017-05-22 14:40 (-11d) | 0.75d? → 0.31d? |  |  |  | baseline start none → 2017-05-22 11:10; baseline finish none → 2017-05-22 14:40 |
| 48 | RF12 - Visualizar Grupo | 2017-06-02 14:00 → 2017-05-22 14:40 (-11d) | 2017-06-05 12:00 → 2017-05-22 17:10 (-14d) | 0.88d? → 0.31d? |  |  |  | baseline start none → 2017-05-22 14:40; baseline finish none → 2017-05-22 17:10 |
| 49 | **Testes** | 2017-05-29 14:20 → 2017-05-16 17:40 (-13d) | 2017-05-30 11:20 → 2017-05-29 14:40 (-1d) | 0.75d? → 8.62d? |  | 0d → 3.94d | 45 → none | baseline start none → 2017-05-16 17:40; baseline finish none → 2017-05-29 14:40 |
| 50 | Testar Conexão Firebase | 2017-05-29 14:20 → 2017-05-16 17:40 (-13d) | 2017-05-30 09:20 → 2017-05-17 13:40 (-13d) |  |  | 0d → 21.08d | none → 41 | baseline start none → 2017-05-16 17:40; baseline finish none → 2017-05-17 13:40 |
| 51 | Testar RFs | 2017-05-30 09:20 → 2017-05-22 17:10 (-8d) | 2017-05-30 11:20 → 2017-05-29 14:40 (-1d) |  |  |  | 50 → 48 | constraint none → finish no earlier than 2017-05-22 18:00; baseline start none → 2017-05-22 17:10; baseline finish none → 2017-05-29 14:40 |
| 52 | **Release 2** | 2017-05-30 11:20 → 2017-05-29 14:40 (-1d) | 2017-06-15 12:00 → 2017-06-05 14:00 (-10d) | 12.08d? → 4.92d? |  |  |  | baseline start none → 2017-05-29 14:40; baseline finish none → 2017-06-05 14:00 |
| 53 | **Planejamento** | 2017-05-30 11:20 → 2017-05-29 14:40 (-1d) | 2017-05-31 18:00 → 2017-05-30 14:00 (-1d) | 1.71d? → 0.92d? |  |  |  | baseline start none → 2017-05-29 14:40; baseline finish none → 2017-05-30 14:00 |
| 54 | **Estimativa Tamanho Definitivo** | 2017-05-30 11:20 → 2017-05-29 14:40 (-1d) | 2017-05-31 10:00 → 2017-05-29 18:00 (-2d) | 0.83d? → 0.42d? |  |  |  | baseline start none → 2017-05-29 14:40; baseline finish none → 2017-05-29 18:00 |
| 55 | Reunião de Definição | 2017-05-30 11:20 → 2017-05-29 14:40 (-1d) | 2017-05-30 12:00 → 2017-05-29 15:00 (-1d) | 0.08d? → 0.04d? |  |  |  | baseline start none → 2017-05-29 14:40; baseline finish none → 2017-05-29 15:00 |
| 56 | Redigir Estimativa Definitiva | 2017-05-30 13:00 → 2017-05-29 15:00 (-1d) | 2017-05-30 17:00 → 2017-05-29 17:00 (-1d) | 0.5d? → 0.25d? |  |  |  | baseline start none → 2017-05-29 15:00; baseline finish none → 2017-05-29 17:00 |
| 57 | Revisar Estimativa Definitiva | 2017-05-30 17:00 → 2017-05-29 17:00 (-1d) | 2017-05-31 10:00 → 2017-05-29 18:00 (-2d) | 0.25d? → 0.12d? |  |  |  | baseline start none → 2017-05-29 17:00; baseline finish none → 2017-05-29 18:00 |
| 58 | **Cronograma Definitivo** | 2017-05-31 10:00 → 2017-05-30 09:00 (-1d) | 2017-05-31 18:00 → 2017-05-30 11:00 (-1d) | 0.88d? → 0.25d? |  |  |  | baseline start none → 2017-05-30 09:00; baseline finish none → 2017-05-30 11:00 |
| 59 | Alterar Cronograma Preliminar | 2017-05-31 10:00 → 2017-05-30 09:00 (-1d) | 2017-05-31 15:00 → 2017-05-30 10:00 (-1d) | 0.5d? → 0.12d? |  |  |  | baseline start none → 2017-05-30 09:00; baseline finish none → 2017-05-30 10:00 |
| 60 | Revisar Cronograma Definitivo | 2017-05-31 15:00 → 2017-05-30 10:00 (-1d) | 2017-05-31 18:00 → 2017-05-30 11:00 (-1d) | 0.38d? → 0.12d? |  |  |  | baseline start none → 2017-05-30 10:00; baseline finish none → 2017-05-30 11:00 |
| 64 | **Desenvolvimento** | 2017-06-01 09:00 → 2017-05-30 14:00 (-2d) | 2017-06-14 12:00 → 2017-06-02 16:00 (-12d) | 9.38d? → 3.25d? |  |  | 60 → 63 | baseline start none → 2017-05-30 14:00; baseline finish none → 2017-06-02 16:00 |
| 65 | RF14 - Editar Administrador do Grupo | 2017-06-05 13:00 → 2017-05-30 14:00 (-6d) | 2017-06-06 11:00 → 2017-05-30 17:00 (-7d) | 0.88d? → 0.38d? |  |  | 48 → none | baseline start none → 2017-05-30 14:00; baseline finish none → 2017-05-30 17:00 |
| 66 | RF16 - Adicionar Instituição | 2017-06-06 11:00 → 2017-05-30 17:00 (-7d) | 2017-06-07 10:00 → 2017-05-31 12:00 (-7d) | 0.88d? → 0.5d? |  |  |  | baseline start none → 2017-05-30 17:00; baseline finish none → 2017-05-31 12:00 |
| 67 | RF17 - Editar Instituição | 2017-06-07 10:00 → 2017-05-31 13:00 (-7d) | 2017-06-07 18:00 → 2017-05-31 16:00 (-7d) | 0.88d? → 0.38d? |  |  |  | baseline start none → 2017-05-31 13:00; baseline finish none → 2017-05-31 16:00 |
| 68 | RF18 - Buscar Instituição | 2017-06-08 09:00 → 2017-05-31 16:00 (-8d) | 2017-06-08 17:00 → 2017-06-01 10:00 (-7d) | 0.88d? → 0.38d? |  |  |  | baseline start none → 2017-05-31 16:00; baseline finish none → 2017-06-01 10:00 |
| 69 | RF23 - Criar Aulas | 2017-06-08 17:00 → 2017-06-01 10:00 (-7d) | 2017-06-09 16:00 → 2017-06-01 15:00 (-8d) | 0.88d? → 0.5d? |  |  |  | baseline start none → 2017-06-01 10:00; baseline finish none → 2017-06-01 15:00 |
| 70 | RF24 - Visualizar Aulas | 2017-06-09 16:00 → 2017-06-01 15:00 (-8d) | 2017-06-12 15:00 → 2017-06-01 18:00 (-11d) | 0.88d? → 0.38d? |  |  |  | baseline start none → 2017-06-01 15:00; baseline finish none → 2017-06-01 18:00 |
| 71 | RF25 - Remover Aulas | 2017-06-12 15:00 → 2017-06-02 09:00 (-10d) | 2017-06-13 14:00 → 2017-06-02 12:00 (-11d) | 0.88d? → 0.38d? |  |  |  | baseline start none → 2017-06-02 09:00; baseline finish none → 2017-06-02 12:00 |
| 72 | RF26 - Editar Aulas | 2017-06-13 14:00 → 2017-06-02 13:00 (-11d) | 2017-06-14 12:00 → 2017-06-02 16:00 (-12d) | 0.88d? → 0.38d? |  |  |  | baseline start none → 2017-06-02 13:00; baseline finish none → 2017-06-02 16:00 |
| 73 | **Testes** | 2017-06-14 13:00 → 2017-06-02 16:00 (-12d) | 2017-06-15 12:00 → 2017-06-05 14:00 (-10d) | 1d? → 0.75d? |  |  |  | baseline start none → 2017-06-02 16:00; baseline finish none → 2017-06-05 14:00 |
| 74 | Testar RFs | 2017-06-14 13:00 → 2017-06-02 16:00 (-12d) | 2017-06-15 12:00 → 2017-06-05 14:00 (-10d) | 1d? → 0.75d? |  |  |  | baseline start none → 2017-06-02 16:00; baseline finish none → 2017-06-05 14:00 |
| 75 | **Release 3** | 2017-06-15 13:00 → 2017-06-05 14:00 (-10d) | 2017-07-03 14:40 → 2017-06-13 14:20 (-20d) | 12.21d? → 6.04d? |  |  |  | baseline start none → 2017-06-05 14:00; baseline finish none → 2017-06-13 14:20 |
| 76 | **Planejamento** | 2017-06-15 13:00 → 2017-06-05 14:00 (-10d) | 2017-06-19 09:40 → 2017-06-08 10:20 (-11d) | 1.71d? → 2.67d? |  |  |  | baseline start none → 2017-06-05 14:00; baseline finish none → 2017-06-08 10:20 |

| ID | Task | Start | Finish | Duration | Total float | Other |
| --- | --- | --- | --- | --- | --- | --- |
| 77 | **Estimativa Tamanho Definitivo** | 2017-06-15 13:00 → 2017-06-05 14:00 (-10d) | 2017-06-16 10:40 → 2017-06-05 17:20 (-11d) | 0.83d? → 0.42d? |  | baseline start none → 2017-06-05 14:00; baseline finish none → 2017-06-05 17:20 |
| 78 | Reunião de Definição | 2017-06-15 13:00 → 2017-06-05 14:00 (-10d) | 2017-06-15 13:40 → 2017-06-05 14:20 (-10d) | 0.08d? → 0.04d? |  | baseline start none → 2017-06-05 14:00; baseline finish none → 2017-06-05 14:20 |
| 79 | Redigir Estimativa Definitiva | 2017-06-15 13:40 → 2017-06-05 14:20 (-10d) | 2017-06-15 17:40 → 2017-06-05 16:20 (-10d) | 0.5d? → 0.25d? |  | baseline start none → 2017-06-05 14:20; baseline finish none → 2017-06-05 16:20 |
| 80 | Revisar Estimativa Definitiva | 2017-06-15 17:40 → 2017-06-05 16:20 (-10d) | 2017-06-16 10:40 → 2017-06-05 17:20 (-11d) | 0.25d? → 0.12d? |  | baseline start none → 2017-06-05 16:20; baseline finish none → 2017-06-05 17:20 |
| 81 | **Cronograma Definitivo** | 2017-06-16 10:40 → 2017-06-05 17:20 (-11d) | 2017-06-19 09:40 → 2017-06-06 10:20 (-13d) | 0.88d? → 0.25d? |  | baseline start none → 2017-06-05 17:20; baseline finish none → 2017-06-06 10:20 |
| 82 | Alterar Cronograma Preliminar | 2017-06-16 10:40 → 2017-06-05 17:20 (-11d) | 2017-06-16 15:40 → 2017-06-06 09:20 (-10d) | 0.5d? → 0.12d? |  | baseline start none → 2017-06-05 17:20; baseline finish none → 2017-06-06 09:20 |
| 83 | Revisar Cronograma Definitivo | 2017-06-16 15:40 → 2017-06-06 09:20 (-10d) | 2017-06-19 09:40 → 2017-06-06 10:20 (-13d) | 0.38d? → 0.12d? |  | baseline start none → 2017-06-06 09:20; baseline finish none → 2017-06-06 10:20 |
| 87 | **Desenvolvimento** | 2017-06-19 09:40 → 2017-06-06 10:20 (-13d) | 2017-06-30 14:40 → 2017-06-12 14:20 (-18d) | 9.5d? → 4.38d? |  | baseline start none → 2017-06-06 10:20; baseline finish none → 2017-06-12 14:20 |
| 88 | RF07 - Criar Conversa | 2017-06-19 09:40 → 2017-06-06 10:20 (-13d) | 2017-06-21 09:40 → 2017-06-07 10:20 (-14d) | 2d? → 1d? |  | baseline start none → 2017-06-06 10:20; baseline finish none → 2017-06-07 10:20 |
| 89 | RF13 - Visualizar Conversa | 2017-06-21 09:40 → 2017-06-07 10:20 (-14d) | 2017-06-21 16:40 → 2017-06-07 13:50 (-14d) | 0.75d? → 0.31d? |  | baseline start none → 2017-06-07 10:20; baseline finish none → 2017-06-07 13:50 |
| 90 | RF08 - Criar Convite | 2017-06-21 16:40 → 2017-06-07 13:50 (-14d) | 2017-06-22 14:40 → 2017-06-07 17:20 (-15d) | 0.75d? → 0.44d? |  | baseline start none → 2017-06-07 13:50; baseline finish none → 2017-06-07 17:20 |
| 91 | RF09 - Rejeitar Convite | 2017-06-22 14:40 → 2017-06-07 17:20 (-15d) | 2017-06-23 11:40 → 2017-06-08 10:50 (-15d) | 0.75d? → 0.31d? |  | baseline start none → 2017-06-07 17:20; baseline finish none → 2017-06-08 10:50 |
| 92 | RF10 - Aceitar Convite | 2017-06-23 11:40 → 2017-06-08 10:50 (-15d) | 2017-06-26 09:40 → 2017-06-08 14:20 (-18d) | 0.75d? → 0.31d? |  | baseline start none → 2017-06-08 10:50; baseline finish none → 2017-06-08 14:20 |
| 93 | RF11 - Revogar Convite | 2017-06-26 09:40 → 2017-06-08 14:20 (-18d) | 2017-06-26 16:40 → 2017-06-08 16:50 (-18d) | 0.75d? → 0.31d? |  | baseline start none → 2017-06-08 14:20; baseline finish none → 2017-06-08 16:50 |
| 94 | RF15 - Compartilhar Mídia | 2017-06-26 16:40 → 2017-06-08 16:50 (-18d) | 2017-06-27 14:40 → 2017-06-09 10:20 (-18d) | 0.75d? → 0.31d? |  | baseline start none → 2017-06-08 16:50; baseline finish none → 2017-06-09 10:20 |
| 95 | RF19 - Criar Enquete | 2017-06-27 14:40 → 2017-06-09 10:20 (-18d) | 2017-06-28 11:40 → 2017-06-09 14:50 (-19d) | 0.75d? → 0.44d? |  | baseline start none → 2017-06-09 10:20; baseline finish none → 2017-06-09 14:50 |
| 96 | RF20 - Visualizar Enquete | 2017-06-28 11:40 → 2017-06-09 14:50 (-19d) | 2017-06-29 09:40 → 2017-06-09 17:20 (-20d) | 0.75d? → 0.31d? |  | baseline start none → 2017-06-09 14:50; baseline finish none → 2017-06-09 17:20 |
| 97 | RF21 - Remover Enquete | 2017-06-29 09:40 → 2017-06-09 17:20 (-20d) | 2017-06-29 16:40 → 2017-06-12 10:50 (-17d) | 0.75d? → 0.31d? |  | baseline start none → 2017-06-09 17:20; baseline finish none → 2017-06-12 10:50 |
| 98 | RF22 - Editar Enquete | 2017-06-29 16:40 → 2017-06-12 10:50 (-17d) | 2017-06-30 14:40 → 2017-06-12 14:20 (-18d) | 0.75d? → 0.31d? |  | baseline start none → 2017-06-12 10:50; baseline finish none → 2017-06-12 14:20 |
| 99 | **Testes** | 2017-06-30 14:40 → 2017-06-12 14:20 (-18d) | 2017-07-03 14:40 → 2017-06-13 14:20 (-20d) |  |  | baseline start none → 2017-06-12 14:20; baseline finish none → 2017-06-13 14:20 |
| 100 | Testar RFs | 2017-06-30 14:40 → 2017-06-12 14:20 (-18d) | 2017-07-03 14:40 → 2017-06-13 14:20 (-20d) |  |  | baseline start none → 2017-06-12 14:20; baseline finish none → 2017-06-13 14:20 |
| 101 | **Fechamento** | 2017-07-03 14:40 → 2017-06-13 14:20 (-20d) | 2017-07-07 14:40 → 2017-06-15 14:20 (-22d) | 4d? → 2d? |  | baseline start none → 2017-06-13 14:20; baseline finish none → 2017-06-15 14:20 |
| 102 | Publicar Aplicativo | 2017-07-03 14:40 → 2017-06-13 14:20 (-20d) | 2017-07-04 14:40 → 2017-06-14 09:20 (-20d) | 1d? → 0.5d? | 3d → 1.5d | baseline start none → 2017-06-13 14:20; baseline finish none → 2017-06-14 09:20 |
| 103 | Relatório Lições Aprendidas | 2017-07-03 14:40 → 2017-06-13 14:20 (-20d) | 2017-07-06 14:40 → 2017-06-14 14:20 (-22d) | 3d? → 1d? |  | baseline start none → 2017-06-13 14:20; baseline finish none → 2017-06-14 14:20 |
| 104 | Atualizar Experiências Prévias | 2017-07-06 14:40 → 2017-06-14 14:20 (-22d) | 2017-07-07 14:40 → 2017-06-15 14:20 (-22d) |  |  | baseline start none → 2017-06-14 14:20; baseline finish none → 2017-06-15 14:20 |

## Version 5 (saved 2017-05-30)

Note of the change: Cronograma Atualizado

Last finish stays 2017-06-15.

Changed:

| ID | Task | Start | Finish | Duration | Complete | Total float | Other |
| --- | --- | --- | --- | --- | --- | --- | --- |
| 1 | **Projeto TalkUniversity** |  |  |  | 45% → 47% |  |  |
| 28 | **Release 1** |  | 2017-05-29 14:40 → 2017-05-29 16:10 | 10.92d? → 11.1d? | 63% → 67% | 12.96d → 12.77d |  |
| 40 | **Desenvolvimento** |  | 2017-05-22 17:10 → 2017-05-23 09:40 (+1d) | 5.31d? → 5.5d? | 82% → 88% | 0d → -0.19d |  |
| 46 | RF03 - Editar Grupo | 2017-05-19 17:40 A | 2017-05-22 11:10 → 2017-05-22 13:40 | 0.31d? → 0.5d? | 0% → 90% | 0d → -0.19d | was named RF02 - Remover grupo |
| 47 | RF02 - Remover Grupo | 2017-05-22 11:10 → 2017-05-22 13:40 | 2017-05-22 14:40 → 2017-05-22 16:10 |  |  | 0d → -0.19d | was named RF03 - Editar grupo |
| 48 | RF12 - Visualizar Grupo | 2017-05-22 14:40 → 2017-05-22 16:10 | 2017-05-22 17:10 → 2017-05-23 09:40 (+1d) |  |  | 0d → -0.19d |  |
| 49 | **Testes** |  | 2017-05-29 14:40 → 2017-05-29 16:10 | 8.62d? → 8.81d? |  |  |  |
| 51 | Testar RFs | 2017-05-22 17:10 → 2017-05-23 09:40 (+1d) | 2017-05-29 14:40 → 2017-05-29 16:10 |  |  | 0d → -0.19d |  |
| 52 | **Release 2** | 2017-05-29 14:40 → 2017-05-29 16:10 | 2017-06-05 14:00 → 2017-06-05 15:30 |  |  | 0d → -0.19d |  |
| 53 | **Planejamento** | 2017-05-29 14:40 → 2017-05-29 16:10 | 2017-05-30 14:00 → 2017-05-30 15:30 |  |  | 0d → -0.19d |  |
| 54 | **Estimativa Tamanho Definitivo** | 2017-05-29 14:40 → 2017-05-29 16:10 | 2017-05-29 18:00 → 2017-05-30 10:30 (+1d) |  |  | 0d → -0.19d |  |
| 55 | Reunião de Definição | 2017-05-29 14:40 → 2017-05-29 16:10 | 2017-05-29 15:00 → 2017-05-29 16:30 |  |  | 0d → -0.19d |  |
| 56 | Redigir Estimativa Definitiva | 2017-05-29 15:00 → 2017-05-29 16:30 | 2017-05-29 17:00 → 2017-05-30 09:30 (+1d) |  |  | 0d → -0.19d |  |
| 57 | Revisar Estimativa Definitiva | 2017-05-29 17:00 → 2017-05-30 09:30 (+1d) | 2017-05-29 18:00 → 2017-05-30 10:30 (+1d) |  |  | 0d → -0.19d |  |
| 58 | **Cronograma Definitivo** | 2017-05-30 09:00 → 2017-05-30 10:30 | 2017-05-30 11:00 → 2017-05-30 13:30 |  |  | 0d → -0.19d |  |
| 59 | Alterar Cronograma Preliminar | 2017-05-30 09:00 → 2017-05-30 10:30 | 2017-05-30 10:00 → 2017-05-30 11:30 |  |  | 0d → -0.19d |  |
| 60 | Revisar Cronograma Definitivo | 2017-05-30 10:00 → 2017-05-30 11:30 | 2017-05-30 11:00 → 2017-05-30 13:30 |  |  | 0d → -0.19d |  |
| 61 | **Plano de projeto** | 2017-05-30 11:00 → 2017-05-30 13:30 | 2017-05-30 14:00 → 2017-05-30 15:30 |  |  | 0d → -0.19d |  |
| 62 | Redigir Plano de Projeto | 2017-05-30 11:00 → 2017-05-30 13:30 | 2017-05-30 12:00 → 2017-05-30 14:30 |  |  | 0d → -0.19d |  |
| 63 | Revisar Plano de Projeto | 2017-05-30 13:00 → 2017-05-30 14:30 | 2017-05-30 14:00 → 2017-05-30 15:30 |  |  | 0d → -0.19d |  |
| 64 | **Desenvolvimento** | 2017-05-30 14:00 → 2017-05-30 15:30 | 2017-06-02 16:00 → 2017-06-02 17:30 |  |  | 0d → -0.19d |  |
| 65 | RF14 - Editar Administrador do Grupo | 2017-05-30 14:00 → 2017-05-30 15:30 | 2017-05-30 17:00 → 2017-05-31 09:30 (+1d) |  |  | 0d → -0.19d |  |
| 66 | RF16 - Adicionar Instituição | 2017-05-30 17:00 → 2017-05-31 09:30 (+1d) | 2017-05-31 12:00 → 2017-05-31 14:30 |  |  | 0d → -0.19d |  |
| 67 | RF17 - Editar Instituição | 2017-05-31 13:00 → 2017-05-31 14:30 | 2017-05-31 16:00 → 2017-05-31 17:30 |  |  | 0d → -0.19d |  |
| 68 | RF18 - Buscar Instituição | 2017-05-31 16:00 → 2017-05-31 17:30 | 2017-06-01 10:00 → 2017-06-01 11:30 |  |  | 0d → -0.19d |  |
| 69 | RF23 - Criar Aulas | 2017-06-01 10:00 → 2017-06-01 11:30 | 2017-06-01 15:00 → 2017-06-01 16:30 |  |  | 0d → -0.19d |  |
| 70 | RF24 - Visualizar Aulas | 2017-06-01 15:00 → 2017-06-01 16:30 | 2017-06-01 18:00 → 2017-06-02 10:30 (+1d) |  |  | 0d → -0.19d |  |
| 71 | RF25 - Remover Aulas | 2017-06-02 09:00 → 2017-06-02 10:30 | 2017-06-02 12:00 → 2017-06-02 14:30 |  |  | 0d → -0.19d |  |
| 72 | RF26 - Editar Aulas | 2017-06-02 13:00 → 2017-06-02 14:30 | 2017-06-02 16:00 → 2017-06-02 17:30 |  |  | 0d → -0.19d |  |
| 73 | **Testes** | 2017-06-02 16:00 → 2017-06-02 17:30 | 2017-06-05 14:00 → 2017-06-05 15:30 |  |  | 0d → -0.19d |  |
| 74 | Testar RFs | 2017-06-02 16:00 → 2017-06-02 17:30 | 2017-06-05 14:00 → 2017-06-05 15:30 |  |  | 0d → -0.19d |  |
| 75 | **Release 3** | 2017-06-05 14:00 → 2017-06-05 15:30 | 2017-06-13 14:20 → 2017-06-13 15:50 |  |  | 0d → -0.19d |  |
| 76 | **Planejamento** | 2017-06-05 14:00 → 2017-06-05 15:30 | 2017-06-08 10:20 → 2017-06-08 11:50 |  |  | 0d → -0.19d |  |
| 77 | **Estimativa Tamanho Definitivo** | 2017-06-05 14:00 → 2017-06-05 15:30 | 2017-06-05 17:20 → 2017-06-06 09:50 (+1d) |  |  | 0d → -0.19d |  |
| 78 | Reunião de Definição | 2017-06-05 14:00 → 2017-06-05 15:30 | 2017-06-05 14:20 → 2017-06-05 15:50 |  |  | 0d → -0.19d |  |
| 79 | Redigir Estimativa Definitiva | 2017-06-05 14:20 → 2017-06-05 15:50 | 2017-06-05 16:20 → 2017-06-05 17:50 |  |  | 0d → -0.19d |  |
| 80 | Revisar Estimativa Definitiva | 2017-06-05 16:20 → 2017-06-05 17:50 | 2017-06-05 17:20 → 2017-06-06 09:50 (+1d) |  |  | 0d → -0.19d |  |
| 81 | **Cronograma Definitivo** | 2017-06-05 17:20 → 2017-06-06 09:50 (+1d) | 2017-06-06 10:20 → 2017-06-06 11:50 |  |  | 0d → -0.19d |  |
| 82 | Alterar Cronograma Preliminar | 2017-06-05 17:20 → 2017-06-06 09:50 (+1d) | 2017-06-06 09:20 → 2017-06-06 10:50 |  |  | 0d → -0.19d |  |
| 83 | Revisar Cronograma Definitivo | 2017-06-06 09:20 → 2017-06-06 10:50 | 2017-06-06 10:20 → 2017-06-06 11:50 |  |  | 0d → -0.19d |  |
| 84 | **Plano de projeto** | 2017-06-06 10:20 → 2017-06-06 11:50 | 2017-06-08 10:20 → 2017-06-08 11:50 |  |  | 5.38d → 5.19d |  |
| 85 | Redigir plano de projeto | 2017-06-06 10:20 → 2017-06-06 11:50 | 2017-06-07 10:20 → 2017-06-07 11:50 |  |  | 5.38d → 5.19d |  |
| 86 | Revisar Plano de projeto | 2017-06-07 10:20 → 2017-06-07 11:50 | 2017-06-08 10:20 → 2017-06-08 11:50 |  |  | 5.38d → 5.19d |  |
| 87 | **Desenvolvimento** | 2017-06-06 10:20 → 2017-06-06 11:50 | 2017-06-12 14:20 → 2017-06-12 15:50 |  |  | 0d → -0.19d |  |
| 88 | RF07 - Criar Conversa | 2017-06-06 10:20 → 2017-06-06 11:50 | 2017-06-07 10:20 → 2017-06-07 11:50 |  |  | 0d → -0.19d |  |
| 89 | RF13 - Visualizar Conversa | 2017-06-07 10:20 → 2017-06-07 11:50 | 2017-06-07 13:50 → 2017-06-07 15:20 |  |  | 0d → -0.19d |  |
| 90 | RF08 - Criar Convite | 2017-06-07 13:50 → 2017-06-07 15:20 | 2017-06-07 17:20 → 2017-06-08 09:50 (+1d) |  |  | 0d → -0.19d |  |
| 91 | RF09 - Rejeitar Convite | 2017-06-07 17:20 → 2017-06-08 09:50 (+1d) | 2017-06-08 10:50 → 2017-06-08 13:20 |  |  | 0d → -0.19d |  |
| 92 | RF10 - Aceitar Convite | 2017-06-08 10:50 → 2017-06-08 13:20 | 2017-06-08 14:20 → 2017-06-08 15:50 |  |  | 0d → -0.19d |  |
| 93 | RF11 - Revogar Convite | 2017-06-08 14:20 → 2017-06-08 15:50 | 2017-06-08 16:50 → 2017-06-09 09:20 (+1d) |  |  | 0d → -0.19d |  |
| 94 | RF15 - Compartilhar Mídia | 2017-06-08 16:50 → 2017-06-09 09:20 (+1d) | 2017-06-09 10:20 → 2017-06-09 11:50 |  |  | 0d → -0.19d |  |
| 95 | RF19 - Criar Enquete | 2017-06-09 10:20 → 2017-06-09 11:50 | 2017-06-09 14:50 → 2017-06-09 16:20 |  |  | 0d → -0.19d |  |
| 96 | RF20 - Visualizar Enquete | 2017-06-09 14:50 → 2017-06-09 16:20 | 2017-06-09 17:20 → 2017-06-12 09:50 (+3d) |  |  | 0d → -0.19d |  |
| 97 | RF21 - Remover Enquete | 2017-06-09 17:20 → 2017-06-12 09:50 (+3d) | 2017-06-12 10:50 → 2017-06-12 13:20 |  |  | 0d → -0.19d |  |
| 98 | RF22 - Editar Enquete | 2017-06-12 10:50 → 2017-06-12 13:20 | 2017-06-12 14:20 → 2017-06-12 15:50 |  |  | 0d → -0.19d |  |
| 99 | **Testes** | 2017-06-12 14:20 → 2017-06-12 15:50 | 2017-06-13 14:20 → 2017-06-13 15:50 |  |  | 0d → -0.19d |  |
| 100 | Testar RFs | 2017-06-12 14:20 → 2017-06-12 15:50 | 2017-06-13 14:20 → 2017-06-13 15:50 |  |  | 0d → -0.19d |  |
| 101 | **Fechamento** | 2017-06-13 14:20 → 2017-06-13 15:50 | 2017-06-15 14:20 → 2017-06-15 15:50 |  |  | 0d → -0.19d |  |
| 102 | Publicar Aplicativo | 2017-06-13 14:20 → 2017-06-13 15:50 | 2017-06-14 09:20 → 2017-06-14 10:50 |  |  | 1.5d → 1.31d |  |
| 103 | Relatório Lições Aprendidas | 2017-06-13 14:20 → 2017-06-13 15:50 | 2017-06-14 14:20 → 2017-06-14 15:50 |  |  | 0d → -0.19d |  |
| 104 | Atualizar Experiências Prévias | 2017-06-14 14:20 → 2017-06-14 15:50 | 2017-06-15 14:20 → 2017-06-15 15:50 |  |  | 0d → -0.19d |  |

## Version 6 (saved 2017-06-05)

Note of the change: Release 2 - Docs

Last finish stays 2017-06-15. Complete tasks 22 → 50.

Changed:

| ID | Task | Start | Finish | Duration | Complete | Total float |
| --- | --- | --- | --- | --- | --- | --- |
| 1 | **Projeto TalkUniversity** |  |  |  | 47% → 68% |  |
| 28 | **Release 1** |  | 2017-05-29 16:10 A |  | 67% → 100% | 12.77d → none |
| 29 | **Planejamento** | 2017-05-12 15:20 A | 2017-05-15 14:40 A |  | 0% → 100% | 0d → none |
| 30 | **Estimativa Tamanho Definitivo** | 2017-05-12 15:20 A | 2017-05-15 09:40 A |  | 0% → 100% | 0d → none |
| 31 | Reunião de Definição | 2017-05-12 15:20 A | 2017-05-12 15:40 A |  | 0% → 100% | 0d → none |
| 32 | Redigir Estimativa Definitiva | 2017-05-12 15:40 A | 2017-05-12 17:40 A |  | 0% → 100% | 0d → none |
| 33 | Revisar Estimativa Definitiva | 2017-05-12 17:40 A | 2017-05-15 09:40 A |  | 0% → 100% | 0d → none |
| 34 | **Cronograma Definitivo** | 2017-05-15 09:40 A | 2017-05-15 11:40 A |  | 0% → 100% | 0d → none |
| 35 | Alterar Cronograma Preliminar | 2017-05-15 09:40 A | 2017-05-15 10:40 A |  | 0% → 100% | 0d → none |
| 36 | Revisar Cronograma Definitivo | 2017-05-15 10:40 A | 2017-05-15 11:40 A |  | 0% → 100% | 0d → none |
| 37 | **Plano de projeto** | 2017-05-15 11:40 A | 2017-05-15 14:40 A |  | 0% → 100% | 0d → none |
| 38 | Redigir Plano de Projeto | 2017-05-15 11:40 A | 2017-05-15 13:40 A |  | 0% → 100% | 0d → none |
| 39 | Revisar Plano de Projeto | 2017-05-15 13:40 A | 2017-05-15 14:40 A |  | 0% → 100% | 0d → none |
| 40 | **Desenvolvimento** |  | 2017-05-23 09:40 A |  | 88% → 100% | -0.19d → none |
| 46 | RF03 - Editar Grupo |  | 2017-05-22 13:40 A |  | 90% → 100% | -0.19d → none |
| 47 | RF02 - Remover Grupo | 2017-05-22 13:40 A | 2017-05-22 16:10 A |  | 0% → 100% | -0.19d → none |
| 48 | RF12 - Visualizar Grupo | 2017-05-22 16:10 A | 2017-05-23 09:40 A |  | 0% → 100% | -0.19d → none |
| 49 | **Testes** | 2017-05-16 17:40 A | 2017-05-29 16:10 A |  | 0% → 100% | 3.94d → none |
| 50 | Testar Conexão Firebase | 2017-05-16 17:40 A | 2017-05-17 13:40 A |  | 0% → 100% | 21.08d → none |
| 51 | Testar RFs | 2017-05-23 09:40 A | 2017-05-29 16:10 A |  | 0% → 100% | -0.19d → none |
| 52 | **Release 2** | 2017-05-29 16:10 A | 2017-06-05 15:30 A |  | 0% → 100% | -0.19d → none |
| 53 | **Planejamento** | 2017-05-29 16:10 A | 2017-05-30 15:30 A |  | 0% → 100% | -0.19d → none |
| 54 | **Estimativa Tamanho Definitivo** | 2017-05-29 16:10 A | 2017-05-30 10:30 A |  | 0% → 100% | -0.19d → none |
| 55 | Reunião de Definição | 2017-05-29 16:10 A | 2017-05-29 16:30 A |  | 0% → 100% | -0.19d → none |
| 56 | Redigir Estimativa Definitiva | 2017-05-29 16:30 A | 2017-05-30 09:30 A |  | 0% → 100% | -0.19d → none |
| 57 | Revisar Estimativa Definitiva | 2017-05-30 09:30 A | 2017-05-30 10:30 A |  | 0% → 100% | -0.19d → none |
| 58 | **Cronograma Definitivo** | 2017-05-30 10:30 A | 2017-05-30 13:30 A |  | 0% → 100% | -0.19d → none |
| 59 | Alterar Cronograma Preliminar | 2017-05-30 10:30 A | 2017-05-30 11:30 A |  | 0% → 100% | -0.19d → none |
| 60 | Revisar Cronograma Definitivo | 2017-05-30 11:30 A | 2017-05-30 13:30 A |  | 0% → 100% | -0.19d → none |
| 61 | **Plano de projeto** | 2017-05-30 13:30 A | 2017-05-30 15:30 A |  | 0% → 100% | -0.19d → none |
| 62 | Redigir Plano de Projeto | 2017-05-30 13:30 A | 2017-05-30 14:30 A |  | 0% → 100% | -0.19d → none |
| 63 | Revisar Plano de Projeto | 2017-05-30 14:30 A | 2017-05-30 15:30 A |  | 0% → 100% | -0.19d → none |
| 64 | **Desenvolvimento** | 2017-05-30 15:30 A | 2017-06-02 17:30 A |  | 0% → 100% | -0.19d → none |
| 65 | RF14 - Editar Administrador do Grupo | 2017-05-30 15:30 A | 2017-05-31 09:30 A |  | 0% → 100% | -0.19d → none |
| 66 | RF16 - Adicionar Instituição | 2017-05-31 09:30 A | 2017-05-31 14:30 → 2017-05-31 11:30 A | 0.5d? → 0.25d? | 0% → 100% | -0.19d → none |
| 67 | RF17 - Editar Instituição | 2017-05-31 14:30 A | 2017-05-31 17:30 → 2017-05-31 16:30 A | 0.38d? → 0.25d? | 0% → 100% | -0.19d → none |
| 68 | RF18 - Buscar Instituição | 2017-05-31 17:30 A | 2017-06-01 11:30 A |  | 0% → 100% | -0.19d → none |
| 69 | RF23 - Criar Aulas | 2017-06-01 11:30 A | 2017-06-01 16:30 → 2017-06-01 15:30 A | 0.5d? → 0.38d? | 0% → 100% | -0.19d → none |
| 70 | RF24 - Visualizar Aulas | 2017-06-01 16:30 A | 2017-06-02 10:30 A |  | 0% → 100% | -0.19d → none |
| 71 | RF25 - Remover Aulas | 2017-06-02 10:30 A | 2017-06-02 14:30 A |  | 0% → 100% | -0.19d → none |
| 72 | RF26 - Editar Aulas | 2017-06-02 14:30 A | 2017-06-02 17:30 A |  | 0% → 100% | -0.19d → none |
| 73 | **Testes** | 2017-06-02 17:30 A | 2017-06-05 15:30 A |  | 0% → 100% | -0.19d → none |
| 74 | Testar RFs | 2017-06-02 17:30 A | 2017-06-05 15:30 A |  | 0% → 100% | -0.19d → none |

## Version 7 (saved 2017-06-12)

Note of the change: Cronograma Atualizado

Last finish stays 2017-06-15. Complete tasks 50 → 63.

Changed:

| ID | Task | Start | Finish | Duration | Complete | Total float |
| --- | --- | --- | --- | --- | --- | --- |
| 1 | **Projeto TalkUniversity** |  |  |  | 68% → 85% |  |
| 64 | **Desenvolvimento** |  | 2017-06-02 17:30 A → 2017-06-05 09:30 A (+3d) | 3.25d? → 3.38d? |  |  |
| 65 | RF14 - Editar Administrador do Grupo |  | 2017-05-31 09:30 A → 2017-05-31 11:30 A | 0.38d? → 0.62d? |  |  |
| 69 | RF23 - Criar Aulas |  | 2017-06-01 15:30 A → 2017-06-01 16:30 A | 0.38d? → 0.5d? |  |  |
| 70 | RF24 - Visualizar Aulas |  | 2017-06-02 10:30 A → 2017-06-02 11:30 A | 0.38d? → 0.5d? |  |  |
| 71 | RF25 - Remover Aulas |  | 2017-06-02 14:30 A → 2017-06-02 15:30 A | 0.38d? → 0.5d? |  |  |
| 72 | RF26 - Editar Aulas |  | 2017-06-02 17:30 A → 2017-06-05 09:30 A (+3d) | 0.38d? → 0.5d? |  |  |
| 75 | **Release 3** | 2017-06-05 15:30 A | 2017-06-13 15:50 → 2017-06-13 16:14 | 6.04d? → 6.09d? | 0% → 66% | -0.19d → -0.24d |
| 76 | **Planejamento** | 2017-06-05 15:30 A | 2017-06-08 11:50 A |  | 0% → 100% | -0.19d → none |
| 77 | **Estimativa Tamanho Definitivo** | 2017-06-05 15:30 A | 2017-06-06 09:50 A |  | 0% → 100% | -0.19d → none |
| 78 | Reunião de Definição | 2017-06-05 15:30 A | 2017-06-05 15:50 A |  | 0% → 100% | -0.19d → none |
| 79 | Redigir Estimativa Definitiva | 2017-06-05 15:50 A | 2017-06-05 17:50 A |  | 0% → 100% | -0.19d → none |
| 80 | Revisar Estimativa Definitiva | 2017-06-05 17:50 A | 2017-06-06 09:50 A |  | 0% → 100% | -0.19d → none |
| 81 | **Cronograma Definitivo** | 2017-06-06 09:50 A | 2017-06-06 11:50 A |  | 0% → 100% | -0.19d → none |
| 82 | Alterar Cronograma Preliminar | 2017-06-06 09:50 A | 2017-06-06 10:50 A |  | 0% → 100% | -0.19d → none |
| 83 | Revisar Cronograma Definitivo | 2017-06-06 10:50 A | 2017-06-06 11:50 A |  | 0% → 100% | -0.19d → none |
| 84 | **Plano de projeto** | 2017-06-06 11:50 A | 2017-06-08 11:50 A |  | 0% → 100% | 5.19d → none |
| 85 | Redigir plano de projeto | 2017-06-06 11:50 A | 2017-06-07 11:50 A |  | 0% → 100% | 5.19d → none |
| 86 | Revisar Plano de projeto | 2017-06-07 11:50 A | 2017-06-08 11:50 A |  | 0% → 100% | 5.19d → none |
| 87 | **Desenvolvimento** | 2017-06-06 11:50 A | 2017-06-12 15:50 → 2017-06-12 16:14 | 4.38d? → 4.42d? | 0% → 58% | -0.19d → 0d |
| 88 | RF07 - Criar Conversa | 2017-06-06 11:50 A | 2017-06-07 11:50 → 2017-06-06 14:20 A (-1d) | 1d? → 0.19d? | 0% → 100% | -0.19d → none |
| 89 | RF13 - Visualizar Conversa | 2017-06-07 11:50 A | 2017-06-07 15:20 → 2017-06-07 13:50 A | 0.31d? → 0.12d? | 0% → 100% | -0.19d → none |
| 90 | RF08 - Criar Convite | 2017-06-07 15:20 A | 2017-06-08 09:50 → 2017-06-07 17:20 A (-1d) | 0.44d? → 0.25d? | 0% → 100% | -0.19d → none |
| 91 | RF09 - Rejeitar Convite | 2017-06-08 09:50 A | 2017-06-08 13:20 A |  | 0% → 100% | -0.19d → none |
| 92 | RF10 - Aceitar Convite | 2017-06-08 13:20 A | 2017-06-08 15:50 A |  | 0% → 100% | -0.19d → none |
| 93 | RF11 - Revogar Convite | 2017-06-08 15:50 A | 2017-06-09 09:20 A |  | 0% → 100% | -0.19d → none |
| 94 | RF15 - Compartilhar Mídia | 2017-06-09 09:20 A | 2017-06-09 11:50 → 2017-06-09 14:20 | 0.31d? → 0.5d? | 0% → 63% | -0.19d → 0d |
| 95 | RF19 - Criar Enquete | 2017-06-09 11:50 A | 2017-06-09 16:20 → 2017-06-09 17:29 |  | 0% → 10% | -0.19d → 0d |
| 96 | RF20 - Visualizar Enquete | 2017-06-09 16:20 A | 2017-06-12 09:50 → 2017-06-12 10:44 |  | 0% → 10% | -0.19d → 0d |
| 97 | RF21 - Remover Enquete | 2017-06-12 09:50 A | 2017-06-12 13:20 → 2017-06-12 13:59 |  | 0% → 10% | -0.19d → 0d |
| 98 | RF22 - Editar Enquete | 2017-06-12 13:20 A | 2017-06-12 15:50 → 2017-06-12 16:14 |  | 0% → 10% | -0.19d → 0d |
| 99 | **Testes** | 2017-06-12 15:50 → 2017-06-12 16:14 | 2017-06-13 15:50 → 2017-06-13 16:14 |  |  | -0.19d → -0.24d |
| 100 | Testar RFs | 2017-06-12 15:50 → 2017-06-12 16:14 | 2017-06-13 15:50 → 2017-06-13 16:14 |  |  | -0.19d → -0.24d |
| 101 | **Fechamento** | 2017-06-13 15:50 → 2017-06-13 16:14 | 2017-06-15 15:50 → 2017-06-15 16:14 |  |  | -0.19d → -0.24d |
| 102 | Publicar Aplicativo | 2017-06-13 15:50 → 2017-06-13 16:14 | 2017-06-14 10:50 → 2017-06-14 11:14 |  |  | 1.31d → 1.26d |
| 103 | Relatório Lições Aprendidas | 2017-06-13 15:50 → 2017-06-13 16:14 | 2017-06-14 15:50 → 2017-06-14 16:14 |  |  | -0.19d → -0.24d |
| 104 | Atualizar Experiências Prévias | 2017-06-14 15:50 → 2017-06-14 16:14 | 2017-06-15 15:50 → 2017-06-15 16:14 |  |  | -0.19d → -0.24d |
